# 商贸大厦设计

Schedule from MS Project, 2002-01-01 to 2002-08-26, costs in ￥.
4156-0077151)

## Calendars

- 标准: Mon-Fri 08:00-12:00, 13:00-17:00; Sat-Sun off.

## Resources

| Resource | Rate |
| --- | --- |
| 设计师 | 8000000 |
| 预算员 |  |
| 管理人员 | 600 |

## Schedule

| ID | WBS | Task | Type | Duration | Start | Finish | Predecessors | Total slack | Free slack | Constraint | Resources | Work | Cost |
| --- | --- | --- | --- | --- | --- | --- | --- | --- | --- | --- | --- | --- | --- |
| 1 | 1 | **100 商贸大厦设计** |  | 170d | 2002-01-01 | 2002-08-26 |  | 0d |  |  |  | 3040h | 2,440,000 |
| 2 | 1.1 | **110 方案设计** |  | 30d | 2002-01-01 | 2002-02-11 |  | 0d |  |  |  | 240h | 224,000 |
| 3 | 1.1.1 | 111 需求调研 |  | 10d | 2002-01-01 | 2002-01-14 |  | 0d |  | start no earlier than 2002-01-01 | 设计师 | 80h | 80,000 |
| 4 | 1.1.2 | 112 总体方案 |  | 10d | 2002-01-15 | 2002-01-28 | 3 | 0d |  |  | 设计师 | 80h | 80,000 |
| 5 | 1.1.3 | 113 设计概算 |  | 10d | 2002-01-29 | 2002-02-11 | 4 | 0d |  |  | 预算员 | 80h | 64,000 |
| 6 | 1.1.4 | 方案设计完成 | milestone | 0d | 2002-01-08 | 2002-01-08 |  | 30d | 0d |  |  |  |  |
| 7 | 1.2 | **120 建筑施工图设计** |  | 40d | 2002-01-08 | 2002-03-04 |  | 0d |  |  |  | 280h | 240,000 |
| 8 | 1.2.1 | 121 平面设计 |  | 10d | 2002-01-08 | 2002-01-21 | 6 | 30d |  |  | 预算员 | 80h | 64,000 |
| 9 | 1.2.2 | 122 立面设计 |  | 15d | 2002-02-12 | 2002-03-04 | 5 | 0d |  |  | 预算员 | 120h | 96,000 |
| 10 | 1.2.3 | 123 剖面设计 |  | 10d | 2002-02-12 | 2002-02-25 | 5 | 5d |  |  | 设计师 | 80h | 80,000 |
| 11 | 1.2.4 | 124 结点设计 |  | 10d | 2002-02-12 | 2002-02-25 | 5 | 5d | 0d |  |  |  |  |
| 12 | 1.2.5 | 建筑施工图设计完成 | milestone | 0d | 2002-02-25 | 2002-02-25 | 11 | 5d |  |  |  |  |  |
| 13 | 1.3 | **130 结构施工图设计** |  | 70d | 2002-03-05 | 2002-06-10 |  | 0d |  |  |  | 560h | 544,000 |
| 14 | 1.3.1 | 131 结构计算 |  | 60d | 2002-03-05 | 2002-05-27 | 8, 9, 10, 12 | 0d |  |  | 设计师 | 480h | 480,000 |
| 15 | 1.3.2 | 132 结构图设计 |  | 10d | 2002-05-28 | 2002-06-10 | 14 | 0d |  |  | 预算员 | 80h | 64,000 |
| 16 | 1.3.3 | 结构施工图设计 | milestone | 0d | 2002-06-10 | 2002-06-10 | 15 | 0d |  |  |  |  |  |
| 17 | 1.4 | **140 机电施工图设计** |  | 35d | 2002-06-11 | 2002-07-29 |  | 0d |  |  |  | 480h | 480,000 |
| 18 | 1.4.1 | 141 给排水设计 |  | 30d | 2002-06-11 | 2002-07-22 | 16 | 0d |  |  | 设计师 | 240h | 240,000 |
| 19 | 1.4.2 | 142 强弱电设计 |  | 30d | 2002-06-18 | 2002-07-29 | 15, 18SS+5d | 0d |  |  | 设计师 | 240h | 240,000 |
| 20 | 1.4.3 | 机电施工图设计完成 | milestone | 0d | 2002-07-29 | 2002-07-29 |  | 20d |  | finish no earlier than 2002-07-29 |  |  |  |
| 21 | 1.5 | 150 审核 |  | 10d | 2002-07-30 | 2002-08-12 | 18, 19 | 0d |  |  | 设计师 | 80h | 80,000 |
| 22 | 1.6 | 160 交付 |  | 10d | 2002-08-13 | 2002-08-26 | 21 | 0d |  |  | 设计师 | 80h | 80,000 |
| 23 | 1.7 | 170 项目管理 |  | 165d | 2002-01-01 | 2002-08-19 |  | 5d |  | start no earlier than 2002-01-01 | 管理人员 | 1320h | 792,000 |
